# Projectsex

Schedule from MS Project, 2017-05-02 to 2017-08-15, costs in $.
Toshiba

## Calendars

- SexyCalendario: Mon-Sat 09:00-13:30, 16:30-20:30; Sun off. Exceptions (off unless hours are given): 2017-05-05 (Descanso), 2017-07-04 (No trabaja), 2017-07-17 to 2017-07-28 (Vacaciones).

## Resources

| Resource | Rate |
| --- | --- |
| Administrador de Proyecto | 118 |
| Análista | 85.63 |
| Diseñador | 103 |
| Programador | 72.12 |
| Tester | 97 |
| Asegurador de la calidad | 90 |
| Administrador de la configuración | 94 |
| Ing. Verificación y validación | 106 |

## Schedule

| ID | WBS | Task | Type | Duration | Start | Finish | Predecessors | Total slack | Free slack | Resources | Work | Cost |
| --- | --- | --- | --- | --- | --- | --- | --- | --- | --- | --- | --- | --- |
| 1 | 1 | **Mejora de procesos** |  | 1d | 2017-05-02 09:00 | 2017-05-02 20:00 |  | 0.19d |  |  | 8h | 752 |
| 2 | 1.1 | **Plan preliminar** |  | 1d | 2017-05-02 09:00 | 2017-05-02 20:00 |  | 0.19d |  |  | 8h | 752 |
| 3 | 1.1.1 | Generar un WBS del producto inicial |  | 3h | 2017-05-02 09:00 | 2017-05-02 12:00 |  | 0.19d | 0d | Administrador de la configuración | 3h | 282 |
| 4 | 1.1.2 | Generar project charter |  | 2h | 2017-05-02 12:00 | 2017-05-02 17:00 | 3 | 0.19d | 0d | Administrador de la configuración | 2h | 188 |
| 5 | 1.1.3 | Plan preliminar del proyecto |  | 2h | 2017-05-02 17:00 | 2017-05-02 19:00 | 4 | 0.19d | 0d | Administrador de la configuración | 2h | 188 |
| 6 | 1.1.4 | Matriz de responsabilidades |  | 1h | 2017-05-02 19:00 | 2017-05-02 20:00 | 5 | 0.19d | 0d | Administrador de la configuración | 1h | 94 |
| 7 | 2 | **Sexy Lady** |  | 82.88d | 2017-05-02 09:00 | 2017-08-15 20:30 |  | 0d |  |  | 628.5h | 57,387.04 |
| 8 | 2.1 | Formación del equipo |  | 1d | 2017-05-02 20:00 | 2017-05-03 19:30 | 6 | 0.19d | 0d | Administrador de Proyecto [50%] | 4h | 472 |
| 9 | 2.2 | **Análisis** |  | 18.5d | 2017-05-02 09:00 | 2017-05-23 12:30 |  | 0.19d | 0d |  | 152h | 13,586.12 |
| 10 | 2.2.1 | **Elicitación de requerimientos** |  | 7.5d | 2017-05-03 19:30 | 2017-05-12 20:00 | 8 | 0.19d | 0d |  | 64h | 5,561.8 |
| 11 | 2.2.1.1 | Generar lista de proveedores |  | 2h | 2017-05-03 19:30 | 2017-05-04 10:00 | 8 | 0.19d | 0d | Administrador de la configuración; Análista | 4h | 359.26 |
| 12 | 2.2.1.2 | Evaluar proveedores de requerimientos |  | 4h | 2017-05-04 10:00 | 2017-05-04 17:00 | 11 | 0.19d | 0d | Administrador de Proyecto [50%]; Análista | 6h | 578.52 |
| 13 | 2.2.1.3 | Definir la estrategía de recolección de requerimientos |  | 2h | 2017-05-04 17:00 | 2017-05-04 19:00 | 12 | 0.19d | 0d | Análista | 2h | 171.26 |
| 14 | 2.2.1.4 | Planificar reuniones de elicitación de requerimientos |  | 3d | 2017-05-04 19:00 | 2017-05-09 17:30 | 13 | 0.19d | 0d | Análista | 24h | 2,055.12 |
| 15 | 2.2.1.5 | Identificar los procesos del sistema |  | 2d | 2017-05-09 17:30 | 2017-05-11 13:30 | 14 | 0.19d | 0d | Análista | 16h | 1,370.08 |
| 16 | 2.2.1.6 | Identificar requerimientos funcionales |  | 1d | 2017-05-11 16:30 | 2017-05-12 13:00 | 15 | 0.19d | 0d | Análista | 8h | 685.04 |
| 17 | 2.2.1.7 | Identificar requerimientos no funcionales |  | 4h | 2017-05-12 13:00 | 2017-05-12 20:00 | 16 | 0.19d | 0d | Análista | 4h | 342.52 |
| 18 | 2.2.2 | **Especificación de requermientos** |  | 2.38d | 2017-05-12 20:00 | 2017-05-16 10:30 | 10 | 0.19d | 0d |  | 23h | 2,098.97 |
| 19 | 2.2.2.1 | Describir los requerimientos |  | 6h | 2017-05-12 20:00 | 2017-05-13 17:30 | 17 | 0.19d | 0d | Análista | 6h | 513.78 |
| 20 | 2.2.2.2 | Evaluar los requerimientos |  | 5h | 2017-05-13 17:30 | 2017-05-15 11:00 | 19 | 0.19d | 0d | Análista | 5h | 428.15 |
| 21 | 2.2.2.3 | SRS |  | 1d | 2017-05-15 11:00 | 2017-05-16 10:30 | 20 | 0.19d | 0d | Análista; Administrador de Proyecto [50%] | 12h | 1,157.04 |
| 22 | 2.2.3 | **Gestión de requerimientos** |  | 5.62d | 2017-05-16 10:30 | 2017-05-22 13:00 | 18 | 0.19d |  |  | 57h | 5,077.35 |
| 23 | 2.2.3.1 | Priorizar los requerimientos |  | 1d | 2017-05-16 10:30 | 2017-05-17 10:00 | 21 | 0.19d | 0d | Análista | 8h | 685.04 |
| 24 | 2.2.3.2 | Almacenar los requerimientos en un repositorio central |  | 5h | 2017-05-17 10:00 | 2017-05-17 18:00 | 23 | 0.19d | 0d | Análista | 5h | 428.15 |
| 25 | 2.2.3.3 | Asignar al grupo de desarrollo los requerimientos del software |  | 8h | 2017-05-17 18:00 | 2017-05-18 17:30 | 24 | 0.19d | 0d | Análista | 8h | 685.04 |
| 26 | 2.2.3.4 | Administrar los cambios de los requerimientos |  | 2d | 2017-05-18 17:30 | 2017-05-20 13:30 | 25 | 0.19d | 0d | Análista | 16h | 1,370.08 |
| 27 | 2.2.3.5 | Administrar la trazabilidad de los requerimientos |  | 1d | 2017-05-20 16:30 | 2017-05-22 13:00 | 26 | 0.19d | 0d | Análista; Administrador de la configuración; Administrador de Proyecto [50%] | 20h | 1,909.04 |
| 28 | 2.2.4 | Pruebas de aceptación |  | 1d | 2017-05-22 13:00 | 2017-05-23 12:30 | 27 | 0.19d | 0d | Ing. Verificación y validación | 8h | 848 |
| 29 | 2.2.5 | Hito de análisis | milestone | 0d | 2017-05-02 09:00 | 2017-05-02 09:00 |  | 18.69d |  |  |  |  |

| ID | WBS | Task | Type | Duration | Start | Finish | Predecessors | Total slack | Free slack | Constraint | Resources | Work | Cost |
| --- | --- | --- | --- | --- | --- | --- | --- | --- | --- | --- | --- | --- | --- |
| 30 | 2.3 | **Planificación** |  | 16.5d | 2017-05-23 12:30 | 2017-06-09 20:00 | 9 | 0.19d | 0d |  |  | 98.5h | 10,661.08 |
| 31 | 2.3.1 | Definir el ciclo de vida |  | 2d | 2017-05-23 12:30 | 2017-05-25 11:30 | 28 | 0.19d | 0d |  | Administrador de Proyecto [50%] | 8h | 944 |
| 32 | 2.3.2 | Políticas del proyecto |  | 1d | 2017-05-25 11:30 | 2017-05-26 11:00 | 31 | 0.19d | 0d |  | Administrador de Proyecto [50%] | 4h | 472 |
| 33 | 2.3.3 | Actualizar plan de proyecto |  | 1d | 2017-05-26 11:00 | 2017-05-27 10:30 | 32 | 0.19d | 0d |  | Administrador de Proyecto [50%]; Administrador de la configuración | 12h | 1,224 |
| 34 | 2.3.4 | **Estimación** |  | 7d | 2017-05-27 10:30 | 2017-06-03 18:30 | 33 | 0.19d | 0d |  |  | 28h | 3,304 |
| 35 | 2.3.4.1 | Actualizar WBS/calendario |  | 2d | 2017-05-27 10:30 | 2017-05-30 09:30 | 33 | 0.19d | 0d |  | Administrador de Proyecto [50%] | 8h | 944 |
| 36 | 2.3.4.2 | Diccionario del WBS |  | 3d | 2017-05-30 09:30 | 2017-06-01 19:30 | 35 | 0.19d | 0d |  | Administrador de Proyecto [50%] | 12h | 1,416 |
| 37 | 2.3.4.3 | Costos |  | 2d | 2017-06-01 19:30 | 2017-06-03 18:30 | 36 | 0.19d | 0d |  | Administrador de Proyecto [50%] | 8h | 944 |
| 38 | 2.3.5 | **Riesgos** |  | 4d | 2017-06-03 18:30 | 2017-06-08 13:30 | 34 | 0.19d | 0d |  |  | 32h | 3,258.08 |
| 39 | 2.3.5.1 | Identificación de riesgos |  | 2d | 2017-06-03 18:30 | 2017-06-06 17:30 | 37 | 0.19d | 0d |  | Administrador de Proyecto [50%]; Análista | 24h | 2,314.08 |
| 40 | 2.3.5.2 | Asignación de prioridades |  | 1d | 2017-06-06 17:30 | 2017-06-07 17:00 | 39 | 0.19d | 0d |  | Administrador de Proyecto [50%] | 4h | 472 |
| 41 | 2.3.5.3 | Plan de mitigación y contingencia |  | 1d | 2017-06-07 17:00 | 2017-06-08 13:30 | 40 | 0.19d | 0d |  | Administrador de Proyecto [50%] | 4h | 472 |
| 42 | 2.3.6 | **Aseguramiento de la calidad** |  | 0.5d | 2017-06-08 16:30 | 2017-06-08 20:30 | 38 | 0.19d |  |  |  | 6.5h | 611 |
| 43 | 2.3.6.1 | Plan de gestión de la configuración |  | 3h | 2017-06-08 16:30 | 2017-06-08 19:30 | 41 | 0.19d | 0d |  | Administrador de la configuración; Asegurador de la calidad | 6h | 552 |
| 44 | 2.3.6.2 | Junta de arranque de proyecto |  | 1h | 2017-06-08 19:30 | 2017-06-08 20:30 | 43 | 0.19d | 0d |  | Administrador de Proyecto [50%] | 0.5h | 59 |
| 45 | 2.3.7 | Pruebas de aceptación |  | 1d | 2017-06-09 09:00 | 2017-06-09 20:00 | 44 | 0.19d | 0d | start no earlier than 2017-05-25 09:00 | Ing. Verificación y validación | 8h | 848 |
| 46 | 2.3.8 | Hito de planificación | milestone | 0d | 2017-05-23 12:30 | 2017-05-23 12:30 |  | 16.69d |  |  |  |  |  |
| 47 | 2.4 | **Diseño** |  | 15.25d | 2017-06-09 20:00 | 2017-06-27 11:30 | 30 | 0.19d | 0d |  |  | 114h | 11,766 |
| 48 | 2.4.1 | Definición de la arquitectura |  | 2h | 2017-06-09 20:00 | 2017-06-10 10:30 | 45 | 0.19d | 0d |  | Diseñador | 2h | 206 |
| 49 | 2.4.2 | **Diagramas UML** |  | 11d | 2017-06-10 10:30 | 2017-06-22 13:30 | 48 | 0.19d |  |  |  | 88h | 9,064 |
| 50 | 2.4.2.1 | Diagramas de caso de uso |  | 2d | 2017-06-10 10:30 | 2017-06-13 09:30 | 48 | 0.19d | 0d |  | Diseñador | 16h | 1,648 |
| 51 | 2.4.2.2 | Diagramas de secuencia |  | 1d | 2017-06-13 09:30 | 2017-06-13 20:30 | 50 | 0.19d | 0d |  | Diseñador | 8h | 824 |
| 52 | 2.4.2.3 | Diagrama de clases |  | 3d | 2017-06-14 09:00 | 2017-06-16 19:00 | 51 | 0.19d | 0d |  | Diseñador | 24h | 2,472 |
| 53 | 2.4.2.4 | Diagrama de actividades |  | 2d | 2017-06-16 19:00 | 2017-06-19 18:00 | 52 | 0.19d | 0d |  | Diseñador | 16h | 1,648 |
| 54 | 2.4.2.5 | Diagrama de componentes |  | 2d | 2017-06-19 18:00 | 2017-06-21 17:00 | 53 | 0.19d | 0d |  | Diseñador | 16h | 1,648 |
| 55 | 2.4.2.6 | Diagrama de despliegue |  | 1d | 2017-06-21 17:00 | 2017-06-22 13:30 | 54 | 0.19d | 0d |  | Diseñador | 8h | 824 |
| 56 | 2.4.3 | Mapa de navegación |  | 8h | 2017-06-22 16:30 | 2017-06-23 13:00 | 55 | 0.19d | 0d |  | Diseñador | 8h | 824 |
| 57 | 2.4.4 | Bocetos/Maquetación |  | 8h | 2017-06-23 13:00 | 2017-06-24 12:30 | 56 | 0.19d | 0d |  | Diseñador | 8h | 824 |

| ID | WBS | Task | Type | Duration | Start | Finish | Predecessors | Total slack | Free slack | Resources | Work | Cost |
| --- | --- | --- | --- | --- | --- | --- | --- | --- | --- | --- | --- | --- |
| 58 | 2.4.5 | **Base de datos** |  | 1d | 2017-06-24 12:30 | 2017-06-26 12:00 | 49 | 0.19d |  |  |  |  |
| 59 | 2.4.5.1 | Diagrama E-R |  | 4h | 2017-06-24 12:30 | 2017-06-24 19:30 | 57 | 0.19d | 0d |  |  |  |
| 60 | 2.4.5.2 | Diagrama Relacional |  | 4h | 2017-06-24 19:30 | 2017-06-26 12:00 | 59 | 0.19d | 0d |  |  |  |
| 61 | 2.4.6 | Pruebas de integración y unidad |  | 1d | 2017-06-26 12:00 | 2017-06-27 11:30 | 60 | 0.19d | 0d | Ing. Verificación y validación | 8h | 848 |
| 62 | 2.4.7 | Hito de diseño | milestone | 0d | 2017-06-09 20:00 | 2017-06-09 20:00 |  | 15.44d |  |  |  |  |
| 63 | 2.5 | **Codificación** |  | 24d | 2017-06-27 11:30 | 2017-08-05 19:30 | 47 | 0d |  |  | 201h | 15,093.24 |
| 64 | 2.5.1 | Codificación de la base de datos |  | 4d | 2017-06-27 11:30 | 2017-07-01 09:30 | 61 | 0.19d | 0d | Programador | 32h | 2,307.84 |
| 65 | 2.5.2 | **Frontend** |  | 8d | 2017-07-01 09:30 | 2017-07-11 17:00 | 64 | 0.19d | 0d |  | 64h | 4,615.68 |
| 66 | 2.5.2.1 | Pag. Inicio |  | 1d | 2017-07-01 09:30 | 2017-07-01 20:30 | 64 | 0.19d | 0d | Programador | 8h | 576.96 |
| 67 | 2.5.2.2 | Pag.Conocenos |  | 1d | 2017-07-03 09:00 | 2017-07-03 20:00 | 66 | 0.19d | 0d | Programador | 8h | 576.96 |
| 68 | 2.5.2.3 | Pag.Instalaciones |  | 1d | 2017-07-03 20:00 | 2017-07-05 19:30 | 67 | 0.19d | 0d | Programador | 8h | 576.96 |
| 69 | 2.5.2.4 | Pag.Galeria |  | 1d | 2017-07-05 19:30 | 2017-07-06 19:00 | 68 | 0.19d | 0d | Programador | 8h | 576.96 |
| 70 | 2.5.2.5 | Pag.Productos |  | 1d | 2017-07-06 19:00 | 2017-07-07 18:30 | 69 | 0.19d | 0d | Programador | 8h | 576.96 |
| 71 | 2.5.2.6 | Pag.Contacto |  | 1d | 2017-07-07 18:30 | 2017-07-08 18:00 | 70 | 0.19d | 0d | Programador | 8h | 576.96 |
| 72 | 2.5.2.7 | Pag.FAQ |  | 1d | 2017-07-08 18:00 | 2017-07-10 17:30 | 71 | 0.19d | 0d | Programador | 8h | 576.96 |
| 73 | 2.5.2.8 | Pag.Login |  | 1d | 2017-07-10 17:30 | 2017-07-11 17:00 | 72 | 0.19d | 0d | Programador | 8h | 576.96 |
| 74 | 2.5.3 | **Backend** |  | 10.12d | 2017-07-11 17:00 | 2017-08-04 10:00 | 65 | 0.19d |  |  | 81h | 5,841.72 |
| 75 | 2.5.3.1 | **Módulo de usuarios** |  | 2.62d | 2017-07-11 17:00 | 2017-07-14 09:30 | 73 | 0.19d | 0d |  | 21h | 1,514.52 |
| 76 | 2.5.3.1.1 | **Interfaz** |  | 1.12d | 2017-07-11 17:00 | 2017-07-12 17:30 | 73 | 0.19d | 0d |  | 9h | 649.08 |
| 77 | 2.5.3.1.1.1 | Nuevo |  | 5h | 2017-07-11 17:00 | 2017-07-12 10:30 | 73 | 0.19d | 0d | Programador | 5h | 360.6 |
| 78 | 2.5.3.1.1.2 | Listar |  | 4h | 2017-07-12 10:30 | 2017-07-12 17:30 | 77 | 0.19d | 0d | Programador | 4h | 288.48 |
| 79 | 2.5.3.1.2 | **Clases de usuario** |  | 1.5d | 2017-07-12 17:30 | 2017-07-14 09:30 | 76 | 0.19d |  |  | 12h | 865.44 |
| 80 | 2.5.3.1.2.1 | Función altas |  | 3h | 2017-07-12 17:30 | 2017-07-12 20:30 | 78 | 0.19d | 0d | Programador | 3h | 216.36 |
| 81 | 2.5.3.1.2.2 | Función baja |  | 3h | 2017-07-13 09:00 | 2017-07-13 12:00 | 80 | 0.19d | 0d | Programador | 3h | 216.36 |
| 82 | 2.5.3.1.2.3 | Función listar |  | 3h | 2017-07-13 12:00 | 2017-07-13 18:00 | 81 | 0.19d | 0d | Programador | 3h | 216.36 |
| 83 | 2.5.3.1.2.4 | Función actualizar |  | 3h | 2017-07-13 18:00 | 2017-07-14 09:30 | 82 | 0.19d | 0d | Programador | 3h | 216.36 |

| ID | WBS | Task | Duration | Start | Finish | Predecessors | Total slack | Free slack | Resources | Work | Cost |
| --- | --- | --- | --- | --- | --- | --- | --- | --- | --- | --- | --- |
| 84 | 2.5.3.2 | **Módulo de productos** | 2.5d | 2017-07-14 09:30 | 2017-07-29 12:30 | 75 | 0.19d | 0d |  | 20h | 1,442.4 |
| 85 | 2.5.3.2.1 | **Interfaz** | 1d | 2017-07-14 09:30 | 2017-07-14 20:30 | 75 | 0.19d | 0d |  | 8h | 576.96 |
| 86 | 2.5.3.2.1.1 | Listar | 3h | 2017-07-14 09:30 | 2017-07-14 12:30 | 83 | 0.19d | 0d | Programador | 3h | 216.36 |
| 87 | 2.5.3.2.1.2 | Nuevo | 5h | 2017-07-14 12:30 | 2017-07-14 20:30 | 86 | 0.19d | 0d | Programador | 5h | 360.6 |
| 88 | 2.5.3.2.2 | **Clases de productos** | 1.5d | 2017-07-15 09:00 | 2017-07-29 12:30 | 85 | 0.19d |  |  | 12h | 865.44 |
| 89 | 2.5.3.2.2.1 | Función altas | 3h | 2017-07-15 09:00 | 2017-07-15 12:00 | 87 | 0.19d | 0d | Programador | 3h | 216.36 |
| 90 | 2.5.3.2.2.2 | Función baja | 3h | 2017-07-15 12:00 | 2017-07-15 18:00 | 89 | 0.19d | 0d | Programador | 3h | 216.36 |
| 91 | 2.5.3.2.2.3 | Función listar | 3h | 2017-07-15 18:00 | 2017-07-29 09:30 | 90 | 0.19d | 0d | Programador | 3h | 216.36 |
| 92 | 2.5.3.2.2.4 | Función actualizar | 3h | 2017-07-29 09:30 | 2017-07-29 12:30 | 91 | 0.19d | 0d | Programador | 3h | 216.36 |
| 93 | 2.5.3.3 | **Módulo de proveedores** | 1.5d | 2017-07-29 12:30 | 2017-07-31 19:00 | 84 | 0.19d | 0d |  | 12h | 865.44 |
| 94 | 2.5.3.3.1 | **Interfaz** | 0.5d | 2017-07-29 12:30 | 2017-07-29 19:30 | 84 | 0.19d | 0d |  | 4h | 288.48 |
| 95 | 2.5.3.3.1.1 | Listar | 2h | 2017-07-29 12:30 | 2017-07-29 17:30 | 92 | 0.19d | 0d | Programador | 2h | 144.24 |
| 96 | 2.5.3.3.1.2 | Nuevo | 2h | 2017-07-29 17:30 | 2017-07-29 19:30 | 95 | 0.19d | 0d | Programador | 2h | 144.24 |
| 97 | 2.5.3.3.2 | **Clases de proveedores** | 1d | 2017-07-29 19:30 | 2017-07-31 19:00 | 94 | 0.19d | 0d |  | 8h | 576.96 |
| 98 | 2.5.3.3.2.1 | Función altas | 2h | 2017-07-29 19:30 | 2017-07-31 10:00 | 96 | 0.19d | 0d | Programador | 2h | 144.24 |
| 99 | 2.5.3.3.2.2 | Función baja | 2h | 2017-07-31 10:00 | 2017-07-31 12:00 | 98 | 0.19d | 0d | Programador | 2h | 144.24 |
| 100 | 2.5.3.3.2.3 | Función listar | 2h | 2017-07-31 12:00 | 2017-07-31 17:00 | 99 | 0.19d | 0d | Programador | 2h | 144.24 |
| 101 | 2.5.3.3.2.4 | Función actualizar | 2h | 2017-07-31 17:00 | 2017-07-31 19:00 | 100 | 0.19d |  | Programador | 2h | 144.24 |
| 102 | 2.5.3.4 | **Módulo de categorías** | 0.75d | 2017-07-31 19:00 | 2017-08-01 13:30 | 93 | 0d |  |  | 6h | 432.72 |
| 103 | 2.5.3.4.1 | **Interfaz** | 0.25d | 2017-07-31 19:00 | 2017-08-01 09:30 | 93 | 0.5d |  |  | 2h | 144.24 |
| 104 | 2.5.3.4.1.1 | Listar | 1h | 2017-07-31 19:00 | 2017-07-31 20:00 | 95 | 0.62d |  | Programador | 1h | 72.12 |
| 105 | 2.5.3.4.1.2 | Nuevo | 1h | 2017-07-31 20:00 | 2017-08-01 09:30 | 96 | 0.5d |  | Programador | 1h | 72.12 |
| 106 | 2.5.3.4.2 | **Clases de categorias** | 0.5d | 2017-08-01 09:30 | 2017-08-01 13:30 |  | 0d |  |  | 4h | 288.48 |
| 107 | 2.5.3.4.2.1 | Función altas | 1h | 2017-08-01 09:30 | 2017-08-01 10:30 | 97 | 0.38d |  | Programador | 1h | 72.12 |
| 108 | 2.5.3.4.2.2 | Función baja | 1h | 2017-08-01 10:30 | 2017-08-01 11:30 | 98 | 0.25d |  | Programador | 1h | 72.12 |
| 109 | 2.5.3.4.2.3 | Función listar | 1h | 2017-08-01 11:30 | 2017-08-01 12:30 | 99 | 0.12d |  | Programador | 1h | 72.12 |
| 110 | 2.5.3.4.2.4 | Función actualizar | 1h | 2017-08-01 12:30 | 2017-08-01 13:30 | 100 | 0d |  | Programador | 1h | 72.12 |

| ID | WBS | Task | Type | Duration | Start | Finish | Predecessors | Total slack | Constraint | Resources | Work | Cost |
| --- | --- | --- | --- | --- | --- | --- | --- | --- | --- | --- | --- | --- |
| 111 | 2.5.3.5 | **Módulo de marcas** |  | 1.62d | 2017-08-01 16:30 | 2017-08-03 09:30 | 102 | 0d |  |  | 13h | 937.56 |
| 112 | 2.5.3.5.1 | **Interfaz** |  | 0.62d | 2017-08-01 16:30 | 2017-08-02 10:00 | 102 | 0d |  |  | 5h | 360.6 |
| 113 | 2.5.3.5.1.1 | Listar |  | 3h | 2017-08-01 16:30 | 2017-08-01 19:30 | 110 | 0d |  | Programador | 3h | 216.36 |
| 114 | 2.5.3.5.1.2 | Nuevo |  | 2h | 2017-08-01 19:30 | 2017-08-02 10:00 | 113 | 0d |  | Programador | 2h | 144.24 |
| 115 | 2.5.3.5.2 | **Clases de marcas** |  | 1d | 2017-08-02 10:00 | 2017-08-03 09:30 | 112 | 0d |  |  | 8h | 576.96 |
| 116 | 2.5.3.5.2.1 | Función altas |  | 4h | 2017-08-02 10:00 | 2017-08-02 17:00 | 114 | 0d |  | Programador | 4h | 288.48 |
| 117 | 2.5.3.5.2.2 | Función baja |  | 1h | 2017-08-02 17:00 | 2017-08-02 18:00 | 116 | 0d |  | Programador | 1h | 72.12 |
| 118 | 2.5.3.5.2.3 | Función listar |  | 2h | 2017-08-02 18:00 | 2017-08-02 20:00 | 117 | 0d |  | Programador | 2h | 144.24 |
| 119 | 2.5.3.5.2.4 | Función actualizar |  | 1h | 2017-08-02 20:00 | 2017-08-03 09:30 | 118 | 0d |  | Programador | 1h | 72.12 |
| 120 | 2.5.3.6 | **Módulo de ventas** |  | 1.12d | 2017-08-03 09:30 | 2017-08-04 10:00 | 111 | 1.88d |  |  | 9h | 649.08 |
| 121 | 2.5.3.6.1 | **Interfaz** |  | 1.12d | 2017-08-03 09:30 | 2017-08-04 10:00 |  | 1.88d |  |  | 9h | 649.08 |
| 122 | 2.5.3.6.1.1 | Listar |  | 4h | 2017-08-03 17:30 | 2017-08-04 10:00 | 107 | 1.88d |  | Programador | 4h | 288.48 |
| 123 | 2.5.3.6.1.2 | Nuevo |  | 5h | 2017-08-03 09:30 | 2017-08-03 17:30 | 108 | 2.38d |  | Programador | 5h | 360.6 |
| 124 | 2.5.3.6.2 | **Clases de ventas** |  | 0.25d | 2017-08-03 09:30 | 2017-08-03 11:30 |  | 2.75d |  |  |  |  |
| 125 | 2.5.3.6.2.1 | Función altas |  | 2h | 2017-08-03 09:30 | 2017-08-03 11:30 | 109 | 2.75d |  |  |  |  |
| 126 | 2.5.3.6.2.2 | Función baja |  | 1h | 2017-08-03 09:30 | 2017-08-03 10:30 | 110 | 2.88d |  |  |  |  |
| 127 | 2.5.3.6.2.3 | Función listar |  | 1h | 2017-08-03 09:30 | 2017-08-03 10:30 | 111 | 2.88d |  |  |  |  |
| 128 | 2.5.4 | Operación y mantenimiento |  | 3d | 2017-08-03 09:30 | 2017-08-05 19:30 | 119 | 0d |  | Tester | 24h | 2,328 |
| 129 | 2.5.5 | Hito de codificación | milestone | 0d | 2017-06-27 11:30 | 2017-06-27 11:30 |  | 24d |  |  |  |  |
| 130 | 2.6 | **Pruebas** |  | 4.75d | 2017-08-05 19:30 | 2017-08-11 12:00 | 63 | 0d |  |  | 38h | 3,704 |
| 131 | 2.6.1 | **Caja blanca** |  | 3.25d | 2017-08-05 19:30 | 2017-08-09 20:00 | 128 | 0d |  |  | 26h | 2,522 |
| 132 | 2.6.1.1 | **Módulo de usuarios** |  | 0.75d | 2017-08-05 19:30 | 2017-08-07 17:00 | 128 | 0d |  |  | 6h | 582 |
| 133 | 2.6.1.1.1 | Pruebas unitarias |  | 3h | 2017-08-05 19:30 | 2017-08-07 11:00 | 128 | 0d |  | Tester | 3h | 291 |
| 134 | 2.6.1.1.2 | Pruebas de módulo |  | 3h | 2017-08-07 11:00 | 2017-08-07 17:00 | 133 | 0d | start no earlier than 2017-06-19 09:00 | Tester | 3h | 291 |

| ID | WBS | Task | Type | Duration | Start | Finish | Predecessors | Total slack | Constraint | Resources | Work | Cost |
| --- | --- | --- | --- | --- | --- | --- | --- | --- | --- | --- | --- | --- |
| 135 | 2.6.1.2 | **Módulo de productos** |  | 0.5d | 2017-08-07 17:00 | 2017-08-08 09:30 | 132 | 0d |  |  | 4h | 388 |
| 136 | 2.6.1.2.1 | Pruebas unitarias |  | 2h | 2017-08-07 17:00 | 2017-08-07 19:00 | 134 | 0d | start no earlier than 2017-06-21 09:00 | Tester | 2h | 194 |
| 137 | 2.6.1.2.2 | Pruebas de módulo |  | 2h | 2017-08-07 19:00 | 2017-08-08 09:30 | 136 | 0d |  | Tester | 2h | 194 |
| 138 | 2.6.1.3 | **Módulo de proveedores** |  | 0.5d | 2017-08-08 09:30 | 2017-08-08 13:30 | 135 | 0d |  |  | 4h | 388 |
| 139 | 2.6.1.3.1 | Pruebas unitarias |  | 2h | 2017-08-08 09:30 | 2017-08-08 11:30 | 137 | 0d |  | Tester | 2h | 194 |
| 140 | 2.6.1.3.2 | Pruebas de módulo |  | 2h | 2017-08-08 11:30 | 2017-08-08 13:30 | 139 | 0d |  | Tester | 2h | 194 |
| 141 | 2.6.1.4 | **Módulo de categorias** |  | 0.5d | 2017-08-08 16:30 | 2017-08-08 20:30 | 138 | 0d |  |  | 4h | 388 |
| 142 | 2.6.1.4.1 | Pruebas unitarias |  | 2h | 2017-08-08 16:30 | 2017-08-08 18:30 | 140 | 0d |  | Tester | 2h | 194 |
| 143 | 2.6.1.4.2 | Pruebas de módulo |  | 2h | 2017-08-08 18:30 | 2017-08-08 20:30 | 142 | 0d |  | Tester | 2h | 194 |
| 144 | 2.6.1.5 | **Módulo de marcas** |  | 0.5d | 2017-08-09 09:00 | 2017-08-09 13:00 | 141 | 0d |  |  | 4h | 388 |
| 145 | 2.6.1.5.1 | Pruebas unitarias |  | 2h | 2017-08-09 09:00 | 2017-08-09 11:00 | 143 | 0d |  | Tester | 2h | 194 |
| 146 | 2.6.1.5.2 | Pruebas de módulo |  | 2h | 2017-08-09 11:00 | 2017-08-09 13:00 | 145 | 0d |  | Tester | 2h | 194 |
| 147 | 2.6.1.6 | **Módulo de ventas** |  | 0.5d | 2017-08-09 13:00 | 2017-08-09 20:00 | 144 | 0d |  |  | 4h | 388 |
| 148 | 2.6.1.6.1 | Pruebas unitarias |  | 2h | 2017-08-09 13:00 | 2017-08-09 18:00 | 146 | 0d |  | Tester | 2h | 194 |
| 149 | 2.6.1.6.2 | Pruebas de módulo |  | 2h | 2017-08-09 18:00 | 2017-08-09 20:00 | 148 | 0d |  | Tester | 2h | 194 |
| 150 | 2.6.2 | Pruebas de sistema |  | 2h | 2017-08-09 20:00 | 2017-08-10 10:30 | 149 | 0d |  | Tester | 2h | 194 |
| 151 | 2.6.3 | Pruebas de integración |  | 2h | 2017-08-10 10:30 | 2017-08-10 12:30 | 150 | 0d |  | Ing. Verificación y validación | 2h | 212 |
| 152 | 2.6.4 | Reporte de pruebas |  | 1d | 2017-08-10 12:30 | 2017-08-11 12:00 | 151 | 0d |  | Tester | 8h | 776 |
| 153 | 2.6.5 | Hito de pruebas | milestone | 0d | 2017-08-05 19:30 | 2017-08-05 19:30 |  | 4.75d |  |  |  |  |
| 154 | 2.7 | **Implementación** |  | 2.5d | 2017-08-11 12:00 | 2017-08-14 18:00 | 130 | 0d |  |  | 14.5h | 1,385.6 |
| 155 | 2.7.1 | Seleccionar servidor web |  | 3h | 2017-08-11 12:00 | 2017-08-11 18:00 | 152 | 0d |  | Programador; Administrador de Proyecto [50%] | 4.5h | 393.36 |
| 156 | 2.7.2 | Montar el sitio web |  | 2h | 2017-08-11 18:00 | 2017-08-11 20:00 | 155 | 0d |  | Programador | 2h | 144.24 |
| 157 | 2.7.3 | Pruebas de integración |  | 1d | 2017-08-11 20:00 | 2017-08-12 19:30 | 156 | 0d |  | Ing. Verificación y validación | 8h | 848 |
| 158 | 2.7.4 | Manual de usuario |  | 3h | 2017-08-12 19:30 | 2017-08-14 11:00 | 157 | 0d |  |  |  |  |
| 159 | 2.7.5 | Manual de sistema |  | 4h | 2017-08-14 11:00 | 2017-08-14 18:00 | 158 | 0d |  |  |  |  |
| 160 | 2.7.6 | Hito de implementación | milestone | 0d | 2017-08-11 12:00 | 2017-08-11 12:00 |  | 2.5d |  |  |  |  |

| ID | WBS | Task | Type | Duration | Start | Finish | Predecessors | Total slack | Constraint | Resources | Work | Cost |
| --- | --- | --- | --- | --- | --- | --- | --- | --- | --- | --- | --- | --- |
| 161 | 2.8 | **Cierre del proyecto** |  | 1.38d | 2017-08-14 18:00 | 2017-08-15 20:30 | 154 | 0d |  |  | 6.5h | 719 |
| 162 | 2.8.1 | Carta de aceptación |  | 1h | 2017-08-14 18:00 | 2017-08-14 19:00 | 159 | 0d |  | Administrador de Proyecto [50%] | 0.5h | 59 |
| 163 | 2.8.2 | Acta de cierre de proyecto |  | 1h | 2017-08-14 19:00 | 2017-08-14 20:00 | 162 | 0d |  | Administrador de Proyecto [50%] | 0.5h | 59 |
| 164 | 2.8.3 | Evaluación del desempeño |  | 2h | 2017-08-14 20:00 | 2017-08-15 10:30 | 163 | 0d |  | Administrador de Proyecto [50%] | 1h | 118 |
| 165 | 2.8.4 | Junta de lecciones aprendidas |  | 2h | 2017-08-15 10:30 | 2017-08-15 12:30 | 164 | 0d |  | Administrador de Proyecto [50%] | 1h | 118 |
| 166 | 2.8.5 | Revisión de adherencias |  | 2h | 2017-08-15 12:30 | 2017-08-15 17:30 | 165 | 0d |  | Administrador de la configuración | 2h | 188 |
| 167 | 2.8.6 | Liberación de recursos |  | 1h | 2017-08-15 17:30 | 2017-08-15 18:30 | 166 | 0d |  | Administrador de Proyecto [50%] | 0.5h | 59 |
| 168 | 2.8.7 | Informe final de cierre |  | 2h | 2017-08-15 18:30 | 2017-08-15 20:30 | 167 | 0d |  | Administrador de Proyecto [50%] | 1h | 118 |
| 169 | 2.8.8 | Hito de cierre | milestone | 0d | 2017-08-14 18:00 | 2017-08-14 18:00 |  | 1.38d |  |  |  |  |
| 173 | 2.8.9 | **Revisión** |  | 0d | 2017-08-14 18:00 | 2017-08-14 18:00 |  | 1.38d |  |  |  |  |
| 174 | 2.8.9.1 | Revisión 1 | milestone | 0d | 2017-08-14 18:00 | 2017-08-14 18:00 |  | 1.38d | start no earlier than 2017-05-06 09:00 |  |  |  |
| 175 | 2.8.9.2 | Revisión 2 | milestone | 0d | 2017-08-14 18:00 | 2017-08-14 18:00 |  | 1.38d | start no earlier than 2017-05-13 09:00 |  |  |  |
| 176 | 2.8.9.3 | Revisión 3 | milestone | 0d | 2017-08-14 18:00 | 2017-08-14 18:00 |  | 1.38d | start no earlier than 2017-05-20 09:00 |  |  |  |
| 177 | 2.8.9.4 | Revisión 4 | milestone | 0d | 2017-08-14 18:00 | 2017-08-14 18:00 |  | 1.38d | start no earlier than 2017-05-27 09:00 |  |  |  |
| 178 | 2.8.9.5 | Revisión 5 | milestone | 0d | 2017-08-14 18:00 | 2017-08-14 18:00 |  | 1.38d | start no earlier than 2017-06-03 09:00 |  |  |  |
| 179 | 2.8.9.6 | Revisión 6 | milestone | 0d | 2017-08-14 18:00 | 2017-08-14 18:00 |  | 1.38d | start no earlier than 2017-06-10 09:00 |  |  |  |
| 180 | 2.8.9.7 | Revisión 7 | milestone | 0d | 2017-08-14 18:00 | 2017-08-14 18:00 |  | 1.38d | start no earlier than 2017-06-17 09:00 |  |  |  |
| 181 | 2.8.9.8 | Revisión 8 | milestone | 0d | 2017-08-14 18:00 | 2017-08-14 18:00 |  | 1.38d | start no earlier than 2017-06-24 09:00 |  |  |  |
| 182 | 2.8.9.9 | Revisión 9 | milestone | 0d | 2017-08-14 18:00 | 2017-08-14 18:00 |  | 1.38d | start no earlier than 2017-07-01 09:00 |  |  |  |
| 183 | 2.8.9.10 | Revisión 10 | milestone | 0d | 2017-08-14 18:00 | 2017-08-14 18:00 |  | 1.38d | start no earlier than 2017-07-08 09:00 |  |  |  |
